# Projeto Algar · BCAPI / BC Billing

Schedule from MS Project XML, 2026-10-05 to 2026-12-04, A marks actual dates.
Binário Cloud

## Calendars

- Padrão Brasil: Mon-Fri 08:00-12:00, 13:00-17:00; Sat-Sun off. Exceptions (off unless hours are given): 2026-10-12, 2026-11-02, 2026-11-15, 2026-11-20.

## Resources

| Resource |
| --- |
| Não atribuído |
| Binário Cloud |
| Algar |

## Schedule

| ID | WBS | Task | Duration | Start | Finish | Complete | Constraint | Resources | Responsável (empresa) | Status no painel |
| --- | --- | --- | --- | --- | --- | --- | --- | --- | --- | --- |
| 1 | 1 | **Marco 0 — Kickoff** | 22d | 2026-10-06 | 2026-11-06 | 100% |  |  |  |  |
| 2 | 1.1 | Publicar painel e liberar usuarios para acompanhamento | 8d | 2026-10-06 A | 2026-10-16 A | 100% | start no earlier than 2026-10-06 | Binário Cloud | Binário | Concluído |
| 3 | 1.2 | Definir pontos focais e cadência de acompanhamento | 2d | 2026-10-07 A | 2026-10-08 A | 100% | start no earlier than 2026-10-07 | Binário Cloud | Binário | Concluído |
| 4 | 1.3 | Reunião de Kickoff 08/10 - 16h | 2d | 2026-10-07 A | 2026-10-08 A | 100% | start no earlier than 2026-10-07 | Binário Cloud | Binário | Concluído |
| 5 | 1.4 | Validação de Marcos, responsáveis e datas | 7d | 2026-10-07 A | 2026-10-16 A | 100% | start no earlier than 2026-10-07 | Binário Cloud | Binário | Concluído |
| 6 | 1.5 | Elaboração da TAP | 6d | 2026-10-08 A | 2026-10-16 A | 100% | start no earlier than 2026-10-08 | Binário Cloud | Binário | Concluído |
| 7 | 1.6 | Envio/Assinatura da TAP | 7d | 2026-10-15 A | 2026-10-23 A | 100% | start no earlier than 2026-10-15 | Binário Cloud; Algar | Binário + Algar | Concluído |
| 8 | 1.7 | Negociação minuta contratual Binario x Algar | 15d | 2026-10-16 A | 2026-11-06 A | 100% | start no earlier than 2026-10-16 | Binário Cloud; Algar | Binário + Algar | Concluído |
| 9 | 2 | **Marco 1 — Fase 1 — SSO / Identity Hub / Portal B2B** | 37d | 2026-10-05 | 2026-11-27 | 72% |  |  |  |  |
| 10 | 2.1 | Concluir a configuração de OpenID Connect, Keycloak e Keystone e trocar o acesso de sandbox pelo fluxo produtivo | 28d | 2026-10-05 A | 2026-11-13 A | 100% | start no earlier than 2026-10-05 | Binário Cloud; Algar | Binário + Algar | Concluído |
| 11 | 2.2 | Envio JWT | 6d | 2026-10-15 A | 2026-10-22 A | 100% | start no earlier than 2026-10-15 | Algar | Algar | Concluído |
| 12 | 2.3 | Envio de credenciais de produção | 3d | 2026-10-16 A | 2026-10-20 A | 100% | start no earlier than 2026-10-16 | Algar | Algar | Concluído |
| 13 | 2.4 | Disponibilizar usuários de serviço das regiões produtivas | 9d | 2026-10-22 A | 2026-11-04 A | 100% | start no earlier than 2026-10-22 | Algar | Algar | Concluído |
| 14 | 2.5 | Incluir a URL do BCP no trusted dashboard da federação do Keystone (stage SP) para validar o SSO | 7d | 2026-10-07 A | 2026-10-16 A | 100% | start no earlier than 2026-10-07 | Binário Cloud; Algar | Binário + Algar | Concluído |
| 15 | 2.6 | Configurar Identity Provider e o mapping no Keystone | 20d | 2026-10-16 A | 2026-11-13 | 50% | start no earlier than 2026-10-16 | Algar | Algar | Em andamento |
| 16 | 2.7 | Validar SSO em ambiente produtivo/região integrada | 10d | 2026-11-13 A | 2026-11-27 | 50% | start no earlier than 2026-11-13 | Binário Cloud | Binário | Em andamento |
| 17 | 2.8 | Validar cenários de segurança do SSO | 10d | 2026-11-13 A | 2026-11-27 | 50% | start no earlier than 2026-11-13 | Binário Cloud | Binário | Em andamento |
| 18 | 2.9 | Consolidar a federação do Keystone nos templates do director | 23d | 2026-10-13 A | 2026-11-13 | 50% | start no earlier than 2026-10-13 | Algar | Algar | Em andamento |
| 19 | 2.10 | Provisionamento 2 VMs para produção | 3d | 2026-10-19 A | 2026-10-21 A | 100% | start no earlier than 2026-10-19 | Algar | Algar | Concluído |
| 20 | 2.11 | Ajustes da nomeclatura dos hosts | 3d | 2026-10-22 A | 2026-10-26 A | 100% | start no earlier than 2026-10-22 | Algar | Algar | Concluído |
| 21 | 2.12 | Ajustes Mesa TI | 10d | 2026-10-30 A | 2026-11-13 | 50% | start no earlier than 2026-10-30 | Binário Cloud | Binário | Em andamento |
| 22 | 2.13 | Definir fluxo de autenticação do Mesa TI via Blazon | 8d | 2026-10-22 A | 2026-11-03 A | 100% | start no earlier than 2026-10-22 | Algar | Algar | Concluído |
| 23 | 2.14 | Liberar acesso dos usuários do Mesa TI | 16d | 2026-10-22 | 2026-11-13 |  | start no earlier than 2026-10-22 | Binário Cloud | Binário | Bloqueada |
| 24 | 2.15 | Aguardando retorno técnico Blazon | 3d | 2026-11-11 | 2026-11-13 |  | start no earlier than 2026-11-11 | Algar | Algar | Não iniciado |
| 25 | 2.16 | Documentar e alinhar virada para produção | 12d | 2026-11-11 A | 2026-11-27 A | 100% | start no earlier than 2026-11-11 | Binário Cloud | Binário | Concluído |

Notes:
- 2: Responsável: Binário · Diogo Lerison / Status no painel: Concluído / Origem: atividade definida no planejamento / Responsável (pessoa): Diogo Lerison
- 3: Responsável: Binário · Diogo Lerison / Status no painel: Concluído / Origem: atividade definida no planejamento / Responsável (pessoa): Diogo Lerison
- 4: Responsável: Binário · Diogo Lerison / Status no painel: Concluído / Origem: atividade definida no planejamento / Responsável (pessoa): Diogo Lerison
- 5: Responsável: Binário · Diogo Lerison / Status no painel: Concluído / Origem: atividade definida no planejamento / Responsável (pessoa): Diogo Lerison
- 6: Responsável: Binário · Diogo Lerison / Status no painel: Concluído / Origem: atividade definida no planejamento / Responsável (pessoa): Diogo Lerison
- 7: Responsável: Binário + Algar · Diogo Lerison / Algar / Status no painel: Concluído / Origem: atividade definida no planejamento / Responsável (pessoa): Diogo Lerison / Algar
- 8: Responsável: Binário + Algar · Diogo Lerison / Emerson Alexandre, Julis Rimet e Flavio Janones / Status no painel: Concluído / Origem: atividade definida no planejamento / Comentário: Aguardando retorno Emerson / Julis / Produtos · Responsável: Emerson Alexandre, Julis Rimet e Flavio Janones / Responsável (pessoa): Diogo Lerison / Emerson Alexandre, Julis Rimet e Flavio Janones
- 10: Responsável: Binário + Algar · Diogo Lerison / Daniel Prado e Luiz Gustavo / Status no painel: Concluído / Origem: atividade definida no planejamento / Comentário: Habilitar autenticação SSO e substituir o acesso de sandbox pelo fluxo produtivo. 04/11/26 - Publicação DNS público do endereço de redirect. · Responsável: Daniel Prado e Luiz Gustavo / Responsável (pessoa): Diogo Lerison / Daniel Prado e Luiz Gustavo
- 11: Responsável: Algar · Luiz Gustavo / Status no painel: Concluído / Origem: atividade definida no planejamento / Comentário: Responsáveil: Luiz Gustavo / Responsável (pessoa): Luiz Gustavo
- 12: Responsável: Algar · Luiz Gustavo / Status no painel: Concluído / Origem: atividade definida no planejamento / Comentário: Responsáveil: Luiz Gustavo / Responsável (pessoa): Luiz Gustavo
- 13: Responsável: Algar · Daniel ou Glauberson / Status no painel: Concluído / Origem: atividade definida no planejamento / Comentário: Responsáveis: Daniel ou Glauberson Fortaleza já avançou; manter aberto somente o que falta para Porto Alegre e demais regiões necessárias. / Responsável (pessoa): Daniel ou Glauberson
- 14: Responsável: Binário + Algar · Diogo Lerison / Daniel Prado / Status no painel: Concluído / Origem: atividade definida no planejamento / Comentário: trusted_dashboard = · Responsável: Daniel Prado / Responsável (pessoa): Diogo Lerison / Daniel Prado
- 15: Responsável: Algar · Daniel Prado / Status no painel: Em andamento / Origem: atividade definida no planejamento / Comentário: ja realizado nas novas regiões Necessario ajuste em SP e Uberlandia, Responsável: Daniel Prado Consolidar IdP, mapping de grupos/projetos/roles e preparar o fluxo para validação produtiva. / Responsável (pessoa): Daniel Prado
- 16: Responsável: Binário · Joab de Araújo Silva / Status no painel: Em andamento / Origem: atividade definida no planejamento / Comentário: O sandbox já deixou de ser o foco. O teste deve validar login, JWT, projetos e roles em região já integrada ao Identity Hub. / Responsável (pessoa): Joab de Araújo Silva
- 17: Responsável: Binário · Joab de Araújo Silva / Status no painel: Em andamento / Origem: atividade definida no planejamento / Comentário: Testar MFA, expiração de token, remoção de usuário e perda de permissões. / Responsável (pessoa): Joab de Araújo Silva
- 18: Responsável: Algar · Glauberson / Status no painel: Em andamento / Origem: atividade definida no planejamento / Comentário: Responsável: Glauberson Aplicar de forma persistente a configuração da federação antes da change produtiva. / Responsável (pessoa): Glauberson
- 19: Responsável: Algar · Glauberson / Status no painel: Concluído / Origem: atividade definida no planejamento / Comentário: Responsável: Glauberson A configuração definida para cada uma das duas novas VMs é: 16 vCPU 32 GB de RAM 500 GB de disco LVM, mantendo espaço livre para expansão futura Instalação limpa, sem clone da POC / Responsável (pessoa): Glauberson
- 20: Responsável: Algar · Glauberson / Status no painel: Concluído / Origem: atividade definida no planejamento / Comentário: Responsável: Glauberson / Responsável (pessoa): Glauberson
- 21: Responsável: Binário · Guilherme Lopes / Tiago Gomes de Oliveira / Status no painel: Em andamento / Origem: atividade definida no planejamento / Comentário: Para chegar no IDP existe os seguintes protocolos: Protocolo SAML2.0 - WSO2 Indentity Server 6.1.0 Protocoloc OIDC - WSO2 Indentity Server 6.1.0 / Responsável (pessoa): Guilherme Lopes / Tiago Gomes de Oliveira
- 22: Responsável: Algar · Julis / Status no painel: Concluído / Origem: atividade definida no planejamento / Comentário: Responsável: Julis · Depende do retorno da Vanessa e do alinhamento técnico com o time Blazon. · Definido pelo cliente, autenticação é feita pelo Microsoft, Mas o usuario utiliza o Plataforma Blazon Necessário assinatura e documentação de autenticação. Julis vai verificar com o fornecedor segunda feira / Responsável (pessoa): Julis
- 23: Responsável: Binário · Guilherme Lopes / Status no painel: Bloqueada / Origem: atividade definida no planejamento / Comentário: Executar após definição do fluxo de autenticação. / Responsável (pessoa): Guilherme Lopes
- 24: Responsável: Algar · Julis / Status no painel: Não iniciado / Origem: atividade definida no planejamento / Comentário: Informações encaminhadas Quarta-feira 11/11 para Vanessa e Landro Borba, aguardando retorno. Responsável: Julis / Responsável (pessoa): Julis
- 25: Responsável: Binário · Joab de Araújo Silva / Diogo Lerison / Status no painel: Concluído / Origem: atividade definida no planejamento / Comentário: Registrar plano, rollback, janela e responsáveis antes da mudança definitiva. / Responsável (pessoa): Joab de Araújo Silva / Diogo Lerison

| ID | WBS | Task | Duration | Start | Finish | Complete | Constraint | Resources | Responsável (empresa) | Status no painel |
| --- | --- | --- | --- | --- | --- | --- | --- | --- | --- | --- |
| 26 | 3 | **Marco 2 — Redirect do BCP API para o Portal B2B** | 40d | 2026-10-07 | 2026-12-04 | 40% |  |  |  |  |
| 27 | 3.1 | Confirmar o sistema de destino | 3d | 2026-10-07 A | 2026-10-09 A | 100% | start no earlier than 2026-10-07 | Binário Cloud; Algar | Binário + Algar | Concluído |
| 28 | 3.2 | Publicar e validar acesso HTTPS/443 do BCP em produção | 40d | 2026-10-07 | 2026-12-04 |  | start no earlier than 2026-10-07 | Algar | Algar | Não iniciado |
| 29 | 3.3 | Exibir botão de custo apenas para perfil financeiro do Cloud Plus | 5d | 2026-10-15 A | 2026-10-21 A | 100% | start no earlier than 2026-10-15 | Binário Cloud | Binário | Concluído |
| 30 | 3.4 | Validar fluxo Portal B2B → SSO → BCP em produção | 27d | 2026-10-27 | 2026-12-04 |  | start no earlier than 2026-10-27 | Binário Cloud | Binário | Não iniciado |
| 31 | 3.5 | Configurar redirect do Portal B2B para o BCP em produção | 25d | 2026-10-29 | 2026-12-04 |  | start no earlier than 2026-10-29 | Algar | Algar | Não iniciado |
| 32 | 4 | **Marco 3 — API e SKU e Flavors** | 35d | 2026-10-07 | 2026-11-27 | 64% |  |  |  |  |
| 33 | 4.1 | Envio do Link da documentação | 7d | 2026-10-07 A | 2026-10-16 A | 100% | start no earlier than 2026-10-07 | Binário Cloud | Binário | Concluído |
| 34 | 4.2 | Validar requisitos de SKU, Flavor e precificação | 6d | 2026-10-08 A | 2026-10-16 A | 100% | start no earlier than 2026-10-08 | Binário Cloud | Binário | Concluído |
| 35 | 4.3 | Concluir adequação dos endpoints de SKU e Flavor | 21d | 2026-10-21 A | 2026-11-19 | 50% | start no earlier than 2026-10-21 | Binário Cloud | Binário | Em andamento |
| 36 | 4.4 | Testar e publicar APIs de SKU e Flavor | 22d | 2026-10-27 | 2026-11-27 |  | start no earlier than 2026-10-27 | Binário Cloud | Binário | Não iniciado |
| 37 | 4.5 | Homologar APIs de SKU e Flavor com a Algar | 20d | 2026-10-29 | 2026-11-27 |  | start no earlier than 2026-10-29 | Binário Cloud; Algar | Binário + Algar | Não iniciado |
| 38 | 4.6 | Coleta de SKU/recursos não mapeados | 12d | 2026-11-04 A | 2026-11-19 A | 100% | start no earlier than 2026-11-04 | Binário Cloud | Binário | Concluído |
| 39 | 4.7 | Snapshot | 12d | 2026-11-04 A | 2026-11-19 A | 100% | start no earlier than 2026-11-04 | Binário Cloud | Binário | Concluído |
| 40 | 5 | **Marco 4 — Novas regiões / Coleta / Billing** | 37d | 2026-10-05 | 2026-11-27 | 70% |  |  |  |  |
| 41 | 5.1 | Ajuste de casas decimais | 8d | 2026-10-05 A | 2026-10-15 A | 100% | start no earlier than 2026-10-05 | Binário Cloud | Binário | Concluído |
| 42 | 5.2 | Enviar as diretrizes de dimensionamento | 3d | 2026-10-07 A | 2026-10-09 A | 100% | start no earlier than 2026-10-07 | Binário Cloud | Binário | Concluído |
| 43 | 5.3 | Validar regras de cobrança das novas regiões | 24d | 2026-10-07 A | 2026-11-11 A | 100% | start no earlier than 2026-10-07 | Algar | Algar | Concluído |
| 44 | 5.4 | Ajustar as VMs da POC para produção (nomes, rede, recursos e isolamento dos serviços) | 9d | 2026-10-13 A | 2026-10-23 A | 100% | start no earlier than 2026-10-13 | Algar | Algar | Concluído |
| 45 | 5.5 | Definir publicação e acesso da calculadora de consumo | 22d | 2026-10-13 A | 2026-11-12 A | 100% | start no earlier than 2026-10-13 | Binário Cloud | Binário | Concluído |
| 46 | 5.6 | Validar certificado e HTTPS do ambiente produtivo | 16d | 2026-10-15 A | 2026-11-06 | 75% | start no earlier than 2026-10-15 | Algar | Algar | Em revisão |
| 47 | 5.7 | Criar o seletor de região no painel de consumo | 6d | 2026-10-19 A | 2026-10-26 A | 100% | start no earlier than 2026-10-19 | Binário Cloud | Binário | Concluído |
| 48 | 5.8 | Liberar firewall e acesso externo conforme domínio e local de hospedagem | 12d | 2026-10-21 A | 2026-11-06 | 25% | start no earlier than 2026-10-21 | Algar | Algar | Aguardando retorno |
| 49 | 5.9 | Começar coleta Porto Alegre | 25d | 2026-10-22 A | 2026-11-27 | 50% | start no earlier than 2026-10-22 | Binário Cloud | Binário | Em andamento |
| 50 | 5.10 | Deploy + Validação | 16d | 2026-10-22 A | 2026-11-13 | 50% | start no earlier than 2026-10-22 | Binário Cloud | Binário | Em andamento |
| 51 | 5.11 | Começar coleta Fortaleza | 25d | 2026-10-22 A | 2026-11-27 | 50% | start no earlier than 2026-10-22 | Binário Cloud | Binário | Em andamento |
| 52 | 5.12 | Deploy + Validação | 16d | 2026-10-22 A | 2026-11-13 | 50% | start no earlier than 2026-10-22 | Binário Cloud | Binário | Em andamento |
| 53 | 5.13 | Apresentar calculadora ao time do Portal | 10d | 2026-10-29 A | 2026-11-12 A | 100% | start no earlier than 2026-10-29 | Binário Cloud | Binário | Concluído |
| 54 | 5.14 | Liberar acesso externo ao MySQL para a BC Data API | 15d | 2026-10-29 A | 2026-11-19 A | 100% | start no earlier than 2026-10-29 | Algar | Algar | Concluído |
| 55 | 5.15 | Validar acessos e endpoints das regiões Canonical | 9d | 2026-10-30 A | 2026-11-12 | 50% | start no earlier than 2026-10-30 | Binário Cloud; Algar | Binário + Algar | Em andamento |
| 56 | 5.16 | Validar endpoint São Paulo DR; | 14d | 2026-10-30 | 2026-11-19 |  | start no earlier than 2026-10-30 | Binário Cloud | Binário | Bloqueada |
| 57 | 5.17 | Validar endpoint São Paulo; | 14d | 2026-10-30 | 2026-11-19 |  | start no earlier than 2026-10-30 | Binário Cloud | Binário | Bloqueada |
| 58 | 5.18 | Validar Endpoint Porto Alegre; | 14d | 2026-10-30 A | 2026-11-19 A | 100% | start no earlier than 2026-10-30 | Binário Cloud | Binário | Concluído |
| 59 | 5.19 | Validar endpoint Fortaleza; | 14d | 2026-10-30 A | 2026-11-19 A | 100% | start no earlier than 2026-10-30 | Binário Cloud | Binário | Concluído |
| 60 | 5.20 | Validar conectividade BC Data API → MySQL | 5d | 2026-11-23 A | 2026-11-27 | 50% | start no earlier than 2026-11-23 | Binário Cloud | Binário | Em andamento |

Notes:
- 27: Responsável: Binário + Algar · Diogo Lerison / Algar / Status no painel: Concluído / Origem: atividade definida no planejamento / Comentário: sandbox --> https://sandbox-billing.cloudalgar.com.br/api/openstack/skyline/api/v1/sso/go produção --> https://consumo.cloudalgar.com.br/api/openstack/skyline/api/v1/sso/go Definir o novo nome , confirmar se consumo.cloudalgar.... Confirmar o sistema de destino: billing.cloudalgar.com.br (visão do cliente), não o Mesa de TI / Responsável (pessoa): Diogo Lerison / Algar
- 28: Responsável: Algar · Algar / Status no painel: Não iniciado / Origem: atividade definida no planejamento / Comentário: Responsável: Algar Infraestrutura, VIP e DNS já foram disponibilizados; falta validar o acesso produtivo e certificado. / Responsável (pessoa): Algar
- 29: Responsável: Binário · Diogo Lerison / Status no painel: Concluído / Origem: atividade definida no planejamento / Comentário: Role Financeiro existente. / Responsável (pessoa): Diogo Lerison
- 30: Responsável: Binário · Diogo Lerison / Joab de Araújo Silva / Status no painel: Não iniciado / Origem: atividade definida no planejamento / Comentário: Validar redirect, autenticação, role financeiro, projetos e acesso ao painel de consumo. / Responsável (pessoa): Diogo Lerison / Joab de Araújo Silva
- 31: Responsável: Algar · Algar / Status no painel: Não iniciado / Origem: atividade definida no planejamento / Comentário: Responsável: Algar Deve ocorrer após a validação do SSO produtivo e da migração para o Identity Hub. / Responsável (pessoa): Algar
- 33: Responsável: Binário · Guilherme Lopes / Diogo Lerison / Status no painel: Concluído / Origem: atividade definida no planejamento / Comentário: Enviar o link para o time Algar (endpoints da API de SKUs e flavors) Tabela 17 já existente / Responsável (pessoa): Guilherme Lopes / Diogo Lerison
- 34: Responsável: Binário · Guilherme Lopes / Status no painel: Concluído / Origem: atividade definida no planejamento / Comentário: Consolidar com a Algar se os campos, preços, SKUs e flavors retornados atendem ao formato necessário. / Responsável (pessoa): Guilherme Lopes
- 35: Responsável: Binário · Guilherme Lopes / Status no painel: Em andamento / Origem: atividade definida no planejamento / Comentário: Finalizar eventuais ajustes de payload e transformação identificados durante a validação. / Responsável (pessoa): Guilherme Lopes
- 36: Responsável: Binário · Guilherme Lopes / Status no painel: Não iniciado / Origem: atividade definida no planejamento / Comentário: Executar testes integrados, publicar a versão ajustada e atualizar a documentação técnica. / Responsável (pessoa): Guilherme Lopes
- 37: Responsável: Binário + Algar · Diogo Lerison / Guilherme Lopes / Joab de Araújo Silva / Algar / Status no painel: Não iniciado / Origem: atividade definida no planejamento / Comentário: Algar valida os retornos e confirma aceite funcional dos endpoints. / Responsável (pessoa): Diogo Lerison / Guilherme Lopes / Joab de Araújo Silva / Algar
- 38: Responsável: Binário · Guilherme Lopes / Guilherme Soares / Status no painel: Concluído / Origem: atividade definida no planejamento / Responsável (pessoa): Guilherme Lopes / Guilherme Soares
- 39: Responsável: Binário · Guilherme Lopes / Guilherme Soares / Status no painel: Concluído / Origem: atividade definida no planejamento / Responsável (pessoa): Guilherme Lopes / Guilherme Soares
- 41: Responsável: Binário · Guilherme Soares / Status no painel: Concluído / Origem: atividade definida no planejamento / Comentário: Deploy concluído: precisão de 6 casas decimais Os preços de SKU, os valores de consumo (on demand e mensal) e o total da fatura passaram a ser calculados e gravados com 6 casas decimais. / Responsável (pessoa): Guilherme Soares
- 42: Responsável: Binário · Joab de Araújo Silva / Guilherme Lopes / Guilherme Soares / Status no painel: Concluído / Origem: atividade definida no planejamento / Comentário: (CPU, memória, disco, redundância) 3 de produção, servidor atual utilizado para POC será usado para teste IP privado para configuração do VIP Flavor 8-32 volume: 500Gb Possibilidade de alto uso de disco ser os logs do Gitlab / Responsável (pessoa): Joab de Araújo Silva / Guilherme Lopes / Guilherme Soares
- 43: Responsável: Algar · Algar (a definir) / Status no painel: Concluído / Origem: atividade definida no planejamento / Comentário: Validar critérios de cobrança, sobreuso, roteador/projeto e banda para as novas regiões e identificar eventual necessidade de ajuste contratual. / Responsável (pessoa): Algar (a definir)
- 44: Responsável: Algar · Algar (a definir) / Status no painel: Concluído / Origem: atividade definida no planejamento / Responsável (pessoa): Algar (a definir)
- 45: Responsável: Binário · Guilherme Lopes / Status no painel: Concluído / Origem: atividade definida no planejamento / Comentário: Definir com o time do Portal como a calculadora será disponibilizada, considerando acesso interno, VPN ou integração com o Portal B2B. / Responsável (pessoa): Guilherme Lopes
- 46: Responsável: Algar · Algar (a definir) / Status no painel: Em revisão / Origem: atividade definida no planejamento / Comentário: Confirmar certificado, cadeia, domínio e acesso HTTPS do ambiente produtivo após a definição definitiva de VIP e DNS. / Responsável (pessoa): Algar (a definir)
- 47: Responsável: Binário · Joab de Araújo Silva / Status no painel: Concluído / Origem: atividade definida no planejamento / Responsável (pessoa): Joab de Araújo Silva
- 48: Responsável: Algar · Algar (a definir) / Status no painel: Aguardando retorno / Origem: atividade definida no planejamento / Comentário: Confirmar regras de firewall, NAT, porta 443 e acessibilidade externa do endereço produtivo. / Responsável (pessoa): Algar (a definir)
- 49: Responsável: Binário · Guilherme Soares / Status no painel: Em andamento / Origem: atividade definida no planejamento / Responsável (pessoa): Guilherme Soares
- 50: Responsável: Binário · Guilherme Soares / Status no painel: Em andamento / Origem: atividade definida no planejamento / Responsável (pessoa): Guilherme Soares
- 51: Responsável: Binário · Guilherme Soares / Status no painel: Em andamento / Origem: atividade definida no planejamento / Responsável (pessoa): Guilherme Soares
- 52: Responsável: Binário · Guilherme Soares / Status no painel: Em andamento / Origem: atividade definida no planejamento / Responsável (pessoa): Guilherme Soares
- 53: Responsável: Binário · Diogo Lerison / Tiago Gomes de Oliveira / Status no painel: Concluído / Origem: atividade definida no planejamento / Responsável (pessoa): Diogo Lerison / Tiago Gomes de Oliveira
- 54: Responsável: Algar · Daniel Lima / Status no painel: Concluído / Origem: atividade definida no planejamento / Comentário: Responsãvel: Daniel Lima Disponibilizar conectividade externa ao banco MySQL gerenciado pela Canonical para permitir acesso da BC Data API. O usuário e as permissões nas tabelas já foram criados; permanece pendente a exposição do endpoint/rede. · Em retorno, sim. E, infelizmente, a Canonical classificou a solicitação como orientação de implementação/customização, fora do escopo do suporte, e ofereceu encaminhar para uma consultoria. O usuário de leitura e as permissões nas tabelas já foram criados. O ponto pendente é disponibilizar o endpoint do banco na rede acessível à aplicação. Identificamos um caminho usando MySQL Router e MetalLB, mas ainda não aplicamos essa alteração por ser um ambiente produtivo e estarmos buscando respaldo técnico. Agenda marcada para conversar sobre o tema dia 13/11 às 15h entre Binario e Algar / Responsável (pessoa): Daniel Lima
- 55: Responsável: Binário + Algar · Joab de Araújo Silva / Daniel Lima / Status no painel: Em andamento / Origem: atividade definida no planejamento / Comentário: Responsável: Daniel Lima Validar acesso via Horizon/API aos endpoints disponibilizados para Nordeste, Sul, São Paulo DR e São Paulo Staging. / Responsável (pessoa): Joab de Araújo Silva / Daniel Lima
- 56: Responsável: Binário · Joab de Araújo Silva / Status no painel: Bloqueada / Origem: atividade definida no planejamento / Comentário: cloudplus.sp.cloudalgar.com.br / Responsável (pessoa): Joab de Araújo Silva
- 57: Responsável: Binário · Joab de Araújo Silva / Status no painel: Bloqueada / Origem: atividade definida no planejamento / Comentário: cloudplus.stg.sp.cloudalgar.com.br / Responsável (pessoa): Joab de Araújo Silva
- 58: Responsável: Binário · Joab de Araújo Silva / Status no painel: Concluído / Origem: atividade definida no planejamento / Comentário: cloudplus.sul.cloudalgar.com.br (openstack-cli) ubuntu@bcapi:~$ openstack endpoint list +----------------------------------+--------+--------------+-----------------+---------+-----------+------------------------------------------------------------------------------------+ / ID / Region / Service Name / Service Type / Enabled / Interface / URL / +----------------------------------+--------+--------------+-----------------+---------+-----------+------------------------------------------------------------------------------------+ / 0af724ffaae745b3be5e246dcc398b6d / sul / cinder / block-storage / True / admin / http://10.152.183.26:8776/v3/$(tenant_id)s / / 199789a527d4420ca6d391e2c3c6fa44 / sul / image-stream / product-streams / True / internal / https://api-internal.sul.cloudalgar.com.br:443/openstack-images-sync/sul / / 20ceb463346e42fc9522bf170d349988 / sul / heat-cfn / cloudformation / True / public / https://cloudplus.sul.cloudalgar.com.br:443/openstack-heat-cfn/v1/$(tenant_id)s / / 21341de195f945bea302f7549999743d / sul / swift / object-store / True / internal / https://rgw.sul.cloudalgar.com.br/swift/v1/AUTH_$(project_id)s / / 219052968bf7416381528bc3951d2aa5 / sul / keystone / identity / True / internal / https://api-internal.sul.cloudalgar.com.br/openstack-keystone/v3 / / 24c5ea0f2cc14a11aa662f431a43faff / sul / watcher / infra-optim / True / admin / http://10.152.183.195:9322 / / 25ad262f36374731b2fe85d0ace86e5b / sul / neutron / network / True / internal / https://api-internal.sul.cloudalgar.com.br:443/openstack-neutron / / 348209da08a7490c8b016d2c4d5f0b3c / sul / glance / image / True / admin / http://10.152.183.72:9292 / / 3f8c32bb448849daacf45b17ed70e80f / sul / nova / compute / True / admin / http://10.152.183.157:8774/v2.1 / / 4e4b124303bf4449841625952e938595 / sul / watcher / infra-optim / True / public / https://cloudplus.sul.cloudalgar.com.br:443/openstack-watcher / / 4eda28faf0be42e4976f48c1f44938f7 / sul / designate / dns / True / internal / https://api-internal.sul.cloudalgar.com.br:443/openstack-designate / / 50a32307e4334e9ca08b4a8dfed21dbe / sul / neutron / network / True / admin / http://10.152.183.187:9696 / / 61de50dce77d4c2ea53824d10cac1b94 / sul / keystone / identity / True / public / https://cloudplus.sul.cloudalgar.com.br/openstack-keystone/v3 / / 67f5e54dea164bd0a1e649b1f359e47b / sul / heat / orchestration / True / internal / https://api-internal.sul.cloudalgar.com.br:443/openstack-heat/v1/$(tenant_id)s / / 69388ef6d9e8497d967512be02598d80 / sul / gnocchi / metric / True / admin / http://10.152.183.105:8041 / / 6c384d01a40e47b684c87bff2a1836dc / sul / designate / dns / True / admin / http://10.152.183.243:9001 / / 6fb988d572d14851bc94c1c577e732c7 / sul / image-stream / product-streams / True / public / https://cloudplus.sul.cloudalgar.com.br:443/openstack-images-sync/sul / / 70ee8c36a86f485bbc69a5940db8f153 / sul / masakari / instance-ha / True / admin / http://10.152.183.90:15868/v1/$(tenant_id)s / / 77efcacbb341411c9d03d2da43632a27 / sul / aodh / alarming / True / admin / http://10.152.183.224:8042 / / 7e2deb4e6ae547aea831d24b640272e9 / sul / gnocchi / metric / True / public / https://cloudplus.sul.cloudalgar.com.br:443/openstack-gnocchi / / 7fc20ac250ba42f9872d1d28b30a48c8 / sul / image-stream / product-streams / True / admin / http://10.152.183.219:80/sul / / 837e60ab0d96460eb84c40d371d5aec2 / sul / cinder / block-storage / True / public / https://cloudplus.sul.cloudalgar.com.br:443/openstack-cinder/v3/$(tenant_id)s / / 8fa236183c374c6ab1e1c81e21509ac2 / sul / s3 / s3 / True / admin / https://rgw.sul.cloudalgar.com.br / / 91e49c32354a4a69b613deceee36a425 / sul / heat-cfn / cloudformation / True / internal / https://api-internal.sul.cloudalgar.com.br:443/openstack-heat-cfn/v1/$(tenant_id)s / / 968b06d1f7714098b7971723f7899c4d / sul / aodh / alarming / True / public / https://cloudplus.sul.cloudalgar.com.br:443/openstack-aodh / / 96eb1a630eb44b81b883a19fee455ccf / sul / s3 / s3 / True / public / https://rgw.sul.cloudalgar.com.br / / 97ec6ff53d71448898ee4078d4299ff3 / sul / glance / image / True / internal / https://api-internal.sul.cloudalgar.com.br:443/openstack-glance / / 9b9fa85d87dd4606993520148187a65a / sul / heat / orchestration / True / admin / http://10.152.183.109:8004/v1/$(tenant_id)s / / a87331b59b044b21ab7b22b2e30c5642 / sul / gnocchi / metric / True / internal / https://api-internal.sul.cloudalgar.com.br:443/openstack-gnocchi / / ab1cee41946640728098fb4213c91069 / sul / cinderv3 / volumev3 / True / internal / https://api-internal.sul.cloudalgar.com.br:443/openstack-cinder/v3/$(tenant_id)s / / b016b5cb5c804ab8874bcecf57a2a55b / sul / placement / placement / True / internal / https://api-internal.sul.cloudalgar.com.br:443/openstack-placement / / b4a9662107a74aaa97b43f0ffdcb176b / sul / heat-cfn / cloudformation / True / admin / http://10.152.183.109:8000/v1/$(tenant_id)s / / c0ec8bbc57cf4ad1a8a5133f070ac30f / sul / keystone / identity / True / admin / https://api-internal.sul.cloudalgar.com.br/openstack-keystone/v3 / / c67236dc5ce94156a0bfcf08919519ea / sul / nova / compute / True / internal / https://api-internal.sul.cloudalgar.com.br:443/openstack-nova/v2.1 / / c8adfe6b42fe49efbe843512c248cee1 / sul / swift / object-store / True / public / https://rgw.sul.cloudalgar.com.br/swift/v1/AUTH_$(project_id)s / / cb38f60e1b4946b2890926a6566a940c / sul / glance / image / True / public / https://cloudplus.sul.cloudalgar.com.br:443/openstack-glance / / d2f3b31a0ca3464d847839b26e1ee190 / sul / watcher / infra-optim / True / internal / https://api-internal.sul.cloudalgar.com.br:443/openstack-watcher / / d4c1cb7fd13544baab389176744f19d6 / sul / masakari / instance-ha / True / internal / https://api-internal.sul.cloudalgar.com.br:443/openstack-masakari/v1/$(tenant_id)s / / d4ff2dc5bc0a4624ad8265fb2aa679e1 / sul / cinder / block-storage / True / internal / https://api-internal.sul.cloudalgar.com.br:443/openstack-cinder/v3/$(tenant_id)s / / e07a4ce2cfc340d6affc4af962b1fc96 / sul / cinderv3 / volumev3 / True / public / https://cloudplus.sul.cloudalgar.com.br:443/openstack-cinder/v3/$(tenant_id)s / / e30ee0c3bba0437f8741d24fabeee3f0 / sul / designate / dns / True / public / https://cloudplus.sul.cloudalgar.com.br:443/openstack-designate / / e3537714134d4857a81367ba3149bf25 / sul / nova / compute / True / public / https://cloudplus.sul.cloudalgar.com.br:443/openstack-nova/v2.1 / / e39a2b4ed242493487719b27ca63368b / sul / placement / placement / True / admin / http://10.152.183.161:8778 / / e4c5f4e2bf3144efbe256522014a787f / sul / heat / orchestration / True / public / https://cloudplus.sul.cloudalgar.com.br:443/openstack-heat/v1/$(tenant_id)s / / e9f5acc5c2824b4b87359002e1c02db8 / sul / cinderv3 / volumev3 / True / admin / http://10.152.183.26:8776/v3/$(tenant_id)s / / ea86357544ae4247a7a159f1ea3300b1 / sul / neutron / network / True / public / https://cloudplus.sul.cloudalgar.com.br:443/openstack-neutron / / eb0743228d114f8cb5013588f5959984 / sul / aodh / alarming / True / internal / https://api-internal.sul.cloudalgar.com.br:443/openstack-aodh / / ed1bcc22603942cca2c7f0f4770f88d4 / sul / s3 / s3 / True / internal / https://rgw.sul.cloudalgar.com.br / / ef2d92a621c74b9aa9a9b895ec240c56 / sul / masakari / instance-ha / True / public / https://cloudplus.sul.cloudalgar.com.br:443/openstack-masakari/v1/$(tenant_id)s / / f3becf7cfa00466284e3240bfc61527e / sul / placement / placement / True / public / https://cloudplus.sul.cloudalgar.com.br:443/openstack-placement / / f61cd1925d58486eb7408a0c81c4a8a2 / sul / swift / object-store / True / admin / https://rgw.sul.cloudalgar.com.br/swift/v1 / +----------------------------------+--------+--------------+-----------------+---------+-----------+------------------------------------------------------------------------------------+ / Responsável (pessoa): Joab de Araújo Silva
- 59: Responsável: Binário · Joab de Araújo Silva / Status no painel: Concluído / Origem: atividade definida no planejamento / Comentário: cloudplus.ne.cloudalgar.com.br / Responsável (pessoa): Joab de Araújo Silva
- 60: Responsável: Binário · Guilherme Soares / Status no painel: Em andamento / Origem: atividade definida no planejamento / Comentário: Testar autenticação, rota de rede, endpoint, porta e acesso às tabelas necessárias após a liberação da Canonical. / Responsável (pessoa): Guilherme Soares
